# Diagrama de Gantt GdP

Schedule from GanttProject, 2025-06-17 to 2025-12-11.
CESE
Diagrama de Gantt de la planificación de proyecto final de la Carrera de Especialización en Sistemas Embebidos de la Universidad de Buenos Aires, realizada en el curso Gestión de Proyectos

## Calendars

- Project calendar: Mon-Sun working.

## Resources

| Resource | Rate |
| --- | --- |
| Ing. Lucas Kirschner | 100 |

## Schedule

| ID | WBS | Task | Duration | Start | Finish | Predecessors | Constraint | Resources |
| --- | --- | --- | --- | --- | --- | --- | --- | --- |
| 1 | 1 | **1. Investigación preliminar** | 12d | 2025-06-17 | 2025-06-28 |  |  |  |
| 2 | 1.1 | 1.1. Revisión de estado del arte | 4d | 2025-06-17 | 2025-06-20 |  |  | Ing. Lucas Kirschner |
| 3 | 1.2 | 1.2. Revisión de normativas industriales | 2d | 2025-06-21 | 2025-06-22 | 2 |  | Ing. Lucas Kirschner |
| 4 | 1.3 | 1.3. Selección de microcontroladores. | 2d | 2025-06-23 | 2025-06-24 | 3 |  | Ing. Lucas Kirschner |
| 5 | 1.4 | 1.4. Estudio de interfaz RS485 | 2d | 2025-06-25 | 2025-06-26 |  |  | Ing. Lucas Kirschner |
| 6 | 1.5 | 1.5. Revisión de interfaces industriales | 2d | 2025-06-27 | 2025-06-28 | 5 |  | Ing. Lucas Kirschner |
| 7 | 2 | **2. Desarrollo de hardware** | 51d | 2025-06-29 | 2025-08-18 | 1 |  |  |
| 8 | 2.1 | 2.1. Revisión de proyectos similares | 3d | 2025-06-29 | 2025-07-01 | 6 |  | Ing. Lucas Kirschner |
| 9 | 2.2 | 2.2. Planteo de estructura del sistema | 2d | 2025-07-02 | 2025-07-03 | 8 |  | Ing. Lucas Kirschner |
| 10 | 2.3 | 2.3. Selección de componentes | 2d | 2025-07-04 | 2025-07-05 | 9 |  | Ing. Lucas Kirschner |
| 11 | 2.4 | 2.4. Creación de librerías | 3d | 2025-07-06 | 2025-07-08 | 10 |  | Ing. Lucas Kirschner |
| 12 | 2.5 | 2.5. Esquemático estación central | 4d | 2025-07-09 | 2025-07-12 | 11 |  | Ing. Lucas Kirschner |
| 13 | 2.6 | 2.6. Esquemático estación remota | 4d | 2025-07-13 | 2025-07-16 | 12 |  | Ing. Lucas Kirschner |
| 14 | 2.7 | 2.7. Ruteo PCB estación central | 5d | 2025-07-17 | 2025-07-21 | 13 |  | Ing. Lucas Kirschner |
| 15 | 2.8 | 2.8. Ruteo PCB estación remota | 4d | 2025-07-22 | 2025-07-25 | 14 |  | Ing. Lucas Kirschner |
| 16 | 2.9 | 2.9. Generación archivos de fabricación | 1d | 2025-07-26 | 2025-07-26 | 15 |  | Ing. Lucas Kirschner |
| 17 | 2.10 | 2.10. Pedido prototipos y compra componentes | 1d | 2025-07-27 | 2025-07-27 | 16 |  | Ing. Lucas Kirschner |
| 18 | 2.11 | 2.11. Armado de prototipos | 4d | 2025-08-12 | 2025-08-15 | 17FS+15d |  | Ing. Lucas Kirschner |
| 19 | 2.12 | 2.12. Pruebas funcionales | 3d | 2025-08-16 | 2025-08-18 | 18 |  | Ing. Lucas Kirschner |
| 20 | 3 | **3. Desarrollo del firmware** | 59d | 2025-07-28 | 2025-09-24 |  |  |  |
| 21 | 3.1 | 3.1. Selección de un RTOS | 4d | 2025-07-28 | 2025-07-31 | 4 | start no earlier than 2025-07-28 | Ing. Lucas Kirschner |
| 22 | 3.2 | 3.2. Definicion de estructura del firmware | 3d | 2025-08-01 | 2025-08-03 | 21 |  | Ing. Lucas Kirschner |
| 23 | 3.3 | 3.3. Arquitectura firmware estación central | 4d | 2025-08-04 | 2025-08-07 | 22 |  | Ing. Lucas Kirschner |
| 24 | 3.4 | 3.4. Arquitectura firmware estación remota | 4d | 2025-08-08 | 2025-08-11 | 23 |  | Ing. Lucas Kirschner |
| 25 | 3.5 | 3.5. Implementación de la API | 7d | 2025-08-19 | 2025-08-25 | 24FS+7d |  | Ing. Lucas Kirschner |
| 26 | 3.6 | 3.6. Programación de drivers | 7d | 2025-08-26 | 2025-09-01 | 25 |  | Ing. Lucas Kirschner |
| 27 | 3.7 | 3.7. Implementación stack RS485 | 6d | 2025-09-02 | 2025-09-07 | 26 |  | Ing. Lucas Kirschner |
| 28 | 3.8 | 3.8. Implementación stack TCP/IP | 6d | 2025-09-08 | 2025-09-13 | 27 |  | Ing. Lucas Kirschner |
| 29 | 3.9 | 3.9. Funciones de adquisición | 7d | 2025-09-14 | 2025-09-20 | 28 |  | Ing. Lucas Kirschner |
| 30 | 3.10 | 3.10. Documentación del firmware y de la API | 4d | 2025-09-21 | 2025-09-24 | 29 |  | Ing. Lucas Kirschner |

| ID | WBS | Task | Duration | Start | Finish | Predecessors | Resources |
| --- | --- | --- | --- | --- | --- | --- | --- |
| 31 | 4 | **4. Integración del sistema** | 12d | 2025-09-25 | 2025-10-06 | 7, 20 |  |
| 32 | 4.1 | 4.1. Integración en estación central | 3d | 2025-09-25 | 2025-09-27 | 19, 30 | Ing. Lucas Kirschner |
| 33 | 4.2 | 4.2. Integración en estaciones remotas | 3d | 2025-09-28 | 2025-09-30 | 32 | Ing. Lucas Kirschner |
| 34 | 4.3 | 4.3. Integración general | 4d | 2025-10-01 | 2025-10-04 | 32, 33 | Ing. Lucas Kirschner |
| 35 | 4.4 | 4.4. Ajustes de hardware y firmware | 2d | 2025-10-05 | 2025-10-06 | 34 | Ing. Lucas Kirschner |
| 36 | 5 | **5. Pruebas de validación** | 8d | 2025-10-07 | 2025-10-14 | 31 |  |
| 37 | 5.1 | 5.1. Diseño de casos de prueba | 2d | 2025-10-07 | 2025-10-08 | 35 | Ing. Lucas Kirschner |
| 38 | 5.2 | 5.2. Pruebas generales del sistema | 4d | 2025-10-09 | 2025-10-12 | 37 | Ing. Lucas Kirschner |
| 39 | 5.3 | 5.3. Evaluación de desempeño | 2d | 2025-10-13 | 2025-10-14 | 38 | Ing. Lucas Kirschner |
| 40 | 6 | **6. Cierre del proyecto** | 58d | 2025-10-15 | 2025-12-11 | 36 |  |
| 41 | 6.1 | 6.1. Desarrollo de informe de avances | 2d | 2025-10-15 | 2025-10-16 | 39 | Ing. Lucas Kirschner |
| 42 | 6.2 | 6.2. Escritura de la memoria técnica | 56d | 2025-10-15 | 2025-12-09 | 39 |  |
| 43 | 6.3 | 6.3. Elaboración de la presentación final | 2d | 2025-12-10 | 2025-12-11 | 41, 42 | Ing. Lucas Kirschner |
